# SMSC Project Plan

Schedule from MS Project, 2002-01-21 to 2002-09-30.
Novosoft

## Calendars

- Standard: Mon-Fri 08:00-12:00, 13:00-17:00; Sat-Sun off.

## Resources

| Resource |
| --- |
| Луговой Сергей |
| Рыжков Виктор |
| Ступник Константин |
| Чен Алексей |
| Макаров Виктор |
| Каляткин Игорь |
| Брызгалов Виталий |
| Documenter |

## Schedule

| ID | WBS | Task | Type | Duration | Start | Finish | Predecessors | Baseline start | Baseline finish | Baseline duration | Total slack | Free slack | Constraint | Resources | Work |
| --- | --- | --- | --- | --- | --- | --- | --- | --- | --- | --- | --- | --- | --- | --- | --- |
| 1 | 1 | **SMS центр** |  | 181d? | 2002-01-21 | 2002-09-30 |  | 2002-01-21 | 2002-09-30 | 181d? | 0d |  |  | Луговой Сергей | 10066h |
| 2 | 1.1 | **1. Анализ и планирование** |  | 40d? | 2002-01-21 | 2002-03-15 |  | 2002-01-21 | 2002-03-15 | 40d? | 1d | 0d |  |  | 1378h |
| 3 | 1.1.1 | **Обучение персонала** |  | 21d | 2002-01-21 | 2002-02-18 |  | 2002-01-21 | 2002-02-18 | 21d? | 20d |  |  |  | 368h |
| 4 | 1.1.1.1 | Разработка процесса обучения |  | 1d | 2002-01-21 | 2002-01-21 |  | 2002-01-21 | 2002-01-21 | 1d | 20d | 0d | start no earlier than 2002-01-21 | Рыжков Виктор | 8h |
| 5 | 1.1.1.2 | Изучение документации |  | 20d | 2002-01-22 | 2002-02-18 | 4 | 2002-01-22 | 2002-02-18 | 20d? | 20d |  | finish no earlier than 2002-02-15 | Ступник Константин; Чен Алексей; Макаров Виктор; Каляткин Игорь; Брызгалов Виталий | 344h |
| 6 | 1.1.1.3 | Проверка процесса обучения |  | 20d | 2002-01-22 | 2002-02-18 | 4 | 2002-01-22 | 2002-02-18 | 20d? | 20d |  | finish no earlier than 2002-02-15 | Рыжков Виктор [50%] | 16h |
| 7 | 1.1.2 | **Система хранения сообщений** |  | 34d | 2002-01-22 | 2002-03-08 |  | 2002-01-22 | 2002-03-08 | 34d? | 6d |  |  |  | 448h |
| 8 | 1.1.2.1 | Архитектура |  | 4d | 2002-01-22 | 2002-01-25 |  | 2002-01-22 | 2002-01-25 | 4d? | 6d | 0d | start no earlier than 2002-01-22 | Рыжков Виктор | 32h |
| 9 | 1.1.2.2 | **Разработка** |  | 15d | 2002-01-28 | 2002-02-15 | 8 | 2002-01-28 | 2002-02-15 | 15d? | 6d |  |  |  | 176h |
| 10 | 1.1.2.2.1 | Чтение документации по XML и Xerces for C++ |  | 2d | 2002-01-28 | 2002-01-29 |  |  |  |  | 6d | 0d | finish no earlier than 2002-01-29 | Каляткин Игорь | 16h |
| 11 | 1.1.2.2.2 | Система логирования |  | 2d | 2002-01-30 | 2002-01-31 | 10 |  |  |  | 10d | 0d | finish no earlier than 2002-01-31 | Каляткин Игорь [50%] | 8h |
| 12 | 1.1.2.2.3 | Библиотека XML конфиг |  | 2d | 2002-02-01 | 2002-02-04 | 11 |  |  |  | 10d | 4d | start no earlier than 2002-02-01 | Каляткин Игорь | 16h |
| 13 | 1.1.2.2.4 | Чтение документации по Oracle OCI |  | 2d | 2002-01-28 | 2002-01-29 |  |  |  |  | 6d | 0d | start no earlier than 2002-01-28 | Макаров Виктор | 16h |
| 14 | 1.1.2.2.5 | Дизайн интерфейсов |  | 2d | 2002-01-30 | 2002-01-31 | 10, 13 |  |  |  | 6d | 0d | finish no earlier than 2002-01-31 | Макаров Виктор; Каляткин Игорь [50%] | 24h |
| 15 | 1.1.2.2.6 | Дизайн реализации |  | 2d | 2002-02-01 | 2002-02-04 | 14 |  |  |  | 6d | 0d | start no earlier than 2002-02-01 | Макаров Виктор; Каляткин Игорь [50%] | 24h |
| 16 | 1.1.2.2.7 | Реализация класса SMS |  | 4d | 2002-02-05 | 2002-02-08 | 15 |  |  |  | 6d | 0d | start no earlier than 2002-02-05 | Макаров Виктор | 32h |
| 17 | 1.1.2.2.8 | Реализация сохранения SMS и запросов к ним |  | 5d | 2002-02-11 | 2002-02-15 | 16, 11, 12 |  |  |  | 6d | 0d |  | Макаров Виктор | 40h |
| 18 | 1.1.2.2.9 | Бета версия системы хранения | milestone | 0d | 2002-02-15 | 2002-02-15 | 17, 23 |  |  |  | 6d | 0d |  |  |  |
| 19 | 1.1.2.3 | Тестирование и исправление |  | 15d | 2002-02-18 | 2002-03-08 | 18 | 2002-02-18 | 2002-03-08 | 15d? | 6d |  | start no earlier than 2002-02-18 | Брызгалов Виталий; Макаров Виктор [50%]; Каляткин Игорь [50%] | 240h |
| 20 | 1.1.3 | **Ядро SMSC** |  | 24d? | 2002-02-01 | 2002-03-06 |  |  |  |  | 8d |  |  |  | 200h |
| 21 | 1.1.3.1 | **Encoder/decoder PDU в SMS класс** |  | 24d? | 2002-02-01 | 2002-03-06 |  |  |  |  | 8d |  |  |  | 168h |
| 22 | 1.1.3.1.1 | Анализ и дизайн интерфейсов |  | 3d | 2002-02-01 | 2002-02-05 |  |  |  |  | 9d | 1d | finish no earlier than 2002-02-05 | Чен Алексей | 24h |
| 23 | 1.1.3.1.2 | Реализация |  | 5d? | 2002-02-07 | 2002-02-13 | 22 |  |  |  | 8d | 0d | start no earlier than 2002-02-07 | Чен Алексей | 40h |
| 24 | 1.1.3.1.3 | **SMPP протокол** |  | 13d | 2002-02-18 | 2002-03-06 | 23 |  |  |  | 8d |  |  |  | 104h |
| 25 | 1.1.3.1.3.1 | Анализ и дизайн интерфейсов |  | 2d | 2002-02-18 | 2002-02-19 |  |  |  |  | 8d | 0d | start no earlier than 2002-02-18 | Чен Алексей | 16h |
| 26 | 1.1.3.1.3.2 | Реализация |  | 7d | 2002-02-20 | 2002-02-28 | 25 |  |  |  | 8d | 0d |  | Чен Алексей | 56h |
| 27 | 1.1.3.1.3.3 | Тестирование |  | 4d | 2002-03-01 | 2002-03-06 | 26 |  |  |  | 8d |  |  | Брызгалов Виталий | 32h |

| ID | WBS | Task | Type | Duration | Start | Finish | Predecessors | Baseline start | Baseline finish | Baseline duration | Total slack | Free slack | Constraint | Resources | Work |
| --- | --- | --- | --- | --- | --- | --- | --- | --- | --- | --- | --- | --- | --- | --- | --- |
| 28 | 1.1.3.2 | **Интерфейс Администратора** |  | 4d | 2002-02-05 | 2002-02-08 |  |  |  |  | 26d |  |  |  | 32h |
| 29 | 1.1.3.2.1 | Анализ |  | 4d | 2002-02-05 | 2002-02-08 |  |  |  |  | 26d |  | finish no earlier than 2002-02-08 | Каляткин Игорь | 32h |
| 30 | 1.1.4 | **Архитектура ядра SMSC** |  | 35d | 2002-01-28 | 2002-03-15 |  | 2002-01-28 | 2002-03-15 | 35d? | 1d |  |  |  | 272h |
| 31 | 1.1.4.1 | Software Requirements Specifications |  | 10d | 2002-01-28 | 2002-02-08 |  | 2002-01-28 | 2002-02-01 | 5d | 7d | 0d | start no earlier than 2002-01-28 | Рыжков Виктор | 80h |
| 32 | 1.1.4.2 | Software Architecture Document |  | 14d | 2002-02-11 | 2002-02-28 | 31 | 2002-02-04 | 2002-02-28 | 19d? | 7d | 6d | finish no earlier than 2002-02-28 | Рыжков Виктор | 112h |
| 33 | 1.1.4.3 | Получение Ericsson ISR-PCI signaling board | milestone | 0d | 2002-03-01 | 2002-03-01 |  | 2002-03-01 | 2002-03-01 | 1d? | 2d | 1d | start no earlier than 2002-03-01 |  |  |
| 34 | 1.1.4.4 | Изучение документации Ericsson ISR-PCI signaling board |  | 5d | 2002-03-04 | 2002-03-08 | 33 | 2002-03-04 | 2002-03-08 | 5d? | 1d | 0d | finish no earlier than 2002-03-08 | Рыжков Виктор | 40h |
| 35 | 1.1.4.5 | Завершение архитектуры центра |  | 5d | 2002-03-11 | 2002-03-15 | 34, 32 | 2002-03-11 | 2002-03-15 | 5d | 1d |  | start no earlier than 2002-03-11 | Рыжков Виктор | 40h |
| 36 | 1.1.5 | **Планирование** |  | 30d? | 2002-02-04 | 2002-03-15 |  | 2002-02-04 | 2002-03-15 | 30d? | 1d |  |  |  | 90h |
| 37 | 1.1.5.1 | Software Development plan |  | 6d | 2002-02-04 | 2002-02-11 |  | 2002-02-04 | 2002-02-11 | 6d | 25d |  | finish no earlier than 2002-02-11 | Луговой Сергей [104.2%] | 50h |
| 38 | 1.1.5.2 | Детальные планы на разработку базовой функциональности центра |  | 5d? | 2002-03-11 | 2002-03-15 | 34 | 2002-03-11 | 2002-03-15 | 5d? | 1d |  | start no earlier than 2002-03-11 | Луговой Сергей | 40h |
| 39 | 1.2 | 2. Разработка базовой функциональности центра |  | 50d | 2002-03-18 | 2002-05-24 | 2 | 2002-03-18 | 2002-05-24 | 50d | 1d | 0d | start no earlier than 2002-03-18 | Ступник Константин; Чен Алексей; Брызгалов Виталий; Макаров Виктор; Каляткин Игорь; Рыжков Виктор | 2400h |
| 40 | 1.3 | 3. Тестирование и исправления базовой функциональности центра |  | 25d? | 2002-05-27 | 2002-06-28 | 39 | 2002-05-27 | 2002-06-28 | 25d? | 1d | 0d |  | Ступник Константин; Чен Алексей; Брызгалов Виталий; Макаров Виктор; Каляткин Игорь; Рыжков Виктор | 1200h |
| 41 | 1.4 | Бета версия SMSC | milestone | 1d? | 2002-06-28 | 2002-06-28 | 40FF | 2002-06-28 | 2002-06-28 | 1d? | 1d | 0d |  |  |  |
| 42 | 1.5 | 4. Разработка сервисов и интерфейса администратора |  | 40d? | 2002-07-01 | 2002-08-23 | 41 | 2002-07-01 | 2002-08-23 | 40d? | 1d | 0d |  | Рыжков Виктор; Ступник Константин; Чен Алексей; Брызгалов Виталий; Макаров Виктор; Каляткин Игорь; Documenter | 2240h |
| 43 | 1.6 | 5. Тестирование и исправление системы в целом |  | 14d? | 2002-08-26 | 2002-09-12 | 42 | 2002-08-26 | 2002-09-12 | 14d? | 1d |  |  | Рыжков Виктор; Ступник Константин; Чен Алексей; Макаров Виктор; Каляткин Игорь; Брызгалов Виталий; Documenter | 784h |
| 44 | 1.7 | 6. Внедрение |  | 11d | 2002-09-16 | 2002-09-30 | 43 | 2002-09-16 | 2002-09-30 | 11d | 0d |  | finish no earlier than 2002-09-30 | Рыжков Виктор; Ступник Константин; Чен Алексей; Макаров Виктор; Каляткин Игорь; Documenter; Брызгалов Виталий | 616h |
