# SMSC Project Plan Iter2

Schedule from MS Project, 2002-03-15 to 2002-06-26, A marks actual dates.
Novosoft

## Calendars

- Standard: Mon-Fri 08:00-12:00, 13:00-17:00; Sat-Sun off. Exceptions (off unless hours are given): 2002-04-27 11:00-13:00, 13:30-19:00, 19:30-21:00, 2002-05-01 to 2002-05-03, 2002-05-09 to 2002-05-10, 2002-05-12 08:00-12:00, 13:00-17:00.

## Resources

| Resource |
| --- |
| Луговой Сергей |
| Рыжков Виктор |
| Ступник Константин |
| Чен Алексей |
| Макаров Виктор |
| Каляткин Игорь |
| Брызгалов Виталий |
| Documenter |

## Schedule

| ID | WBS | Task | Duration | Start | Finish | Predecessors | Complete | Remaining | Baseline start | Baseline finish | Baseline duration | Total slack | Free slack | Constraint | Resources | Work | Actual work |
| --- | --- | --- | --- | --- | --- | --- | --- | --- | --- | --- | --- | --- | --- | --- | --- | --- | --- |
| 1 | 1 | **2. Разработка базовой функциональности центра** | 71.12d | 2002-03-15 A | 2002-06-26 |  | 36% | 45.17d | 2002-03-18 | 2002-05-24 | 50d | 0d |  |  | Луговой Сергей | 3076.5h | 1668.64h |
| 2 | 1.1 | **SMSC Core** | 48.12d | 2002-03-18 A | 2002-05-27 |  | 62% | 18.38d | 2002-03-18 | 2002-05-24 | 46d | 22d |  |  |  | 1545h | 958.44h |
| 3 | 1.1.1 | **Прототип SMS центра** | 32.12d | 2002-03-18 A | 2002-04-29 |  | 88% | 3.98d | 2002-03-18 | 2002-04-22 | 26d | 28d | 6d |  |  | 460h | 424h |
| 4 | 1.1.1.1 | **SME Manager** | 32.12d | 2002-03-18 A | 2002-04-29 |  | 76% | 7.84d | 2002-03-18 | 2002-04-17 | 23d | 28d |  |  |  | 166h | 142h |
| 5 | 1.1.1.1.1 | Архитектура | 6.5d | 2002-03-18 A | 2002-03-26 A |  | 100% |  | 2002-03-18 | 2002-03-21 | 4d |  |  | start no earlier than 2002-03-18 | Чен Алексей [200%]; Рыжков Виктор | 64h | 64h |
| 6 | 1.1.1.1.2 | Разработка | 6.5d | 2002-03-19 A | 2002-03-28 A | 5 | 100% |  | 2002-03-22 | 2002-03-25 | 2d |  |  |  | Чен Алексей [200%] | 51h | 51h |
| 7 | 1.1.1.1.3 | Тесткейсы | 3d | 2002-04-08 A | 2002-04-17 A | 5 | 100% |  | 2002-04-08 | 2002-04-10 | 3d |  |  | start no earlier than 2002-04-08 | Брызгалов Виталий [106.2%] | 20.5h | 20.5h |
| 8 | 1.1.1.1.4 | Тестирование | 6.12d | 2002-04-22 A | 2002-04-29 | 7, 6 | 12% | 5.4d | 2002-04-15 | 2002-04-17 | 3d | 6d |  | start no earlier than 2002-04-15 | Брызгалов Виталий [31.2%]; Чен Алексей | 30.5h | 6.5h |
| 9 | 1.1.1.2 | **SMPP transport support** | 24d | 2002-03-25 A | 2002-04-25 |  | 91% | 2.11d | 2002-03-25 | 2002-04-22 | 21d | 31.12d |  |  |  | 192h | 180h |
| 10 | 1.1.1.2.1 | Архитектура | 7.5d | 2002-03-25 A | 2002-04-03 A |  | 100% |  | 2002-03-25 | 2002-03-29 | 5d |  |  | start no earlier than 2002-03-25 | Рыжков Виктор [200%]; Ступник Константин | 97h | 97h |
| 11 | 1.1.1.2.2 | Разработка | 1.5d | 2002-04-03 A | 2002-04-04 A | 10 | 100% |  | 2002-04-01 | 2002-04-02 | 2d |  |  |  | Ступник Константин [200%] | 16h | 16h |
| 12 | 1.1.1.2.3 | Тесткейсы | 5d | 2002-04-16 A | 2002-04-25 A | 10 | 100% |  | 2002-04-11 | 2002-04-12 | 2d |  |  | finish no earlier than 2002-04-12 | Брызгалов Виталий [112.5%] | 32h | 32h |
| 13 | 1.1.1.2.4 | Тестирование | 5d | 2002-04-08 A | 2002-04-22 | 12, 11 | 67% | 1.67d | 2002-04-18 | 2002-04-22 | 3d | 34.12d |  | start no earlier than 2002-04-18 | Брызгалов Виталий [50%]; Ступник Константин | 47h | 35h |
| 14 | 1.1.1.3 | **SMSC application** | 14d | 2002-04-01 A | 2002-04-18 A | 6, 11 | 100% |  | 2002-04-03 | 2002-04-18 | 12d |  |  |  |  | 89h | 89h |
| 15 | 1.1.1.3.1 | Архитектура | 2d | 2002-04-01 A | 2002-04-04 A |  | 100% |  | 2002-04-03 | 2002-04-04 | 2d |  |  | start no earlier than 2002-04-03 | Ступник Константин [12.5%]; Рыжков Виктор [50%] | 5h | 5h |
| 16 | 1.1.1.3.2 | Разработка | 5d | 2002-04-01 A | 2002-04-09 A | 15 | 100% |  | 2002-04-05 | 2002-04-08 | 2d |  |  | finish no earlier than 2002-04-08 | Ступник Константин; Чен Алексей | 48h | 48h |
| 17 | 1.1.1.3.3 | Тесткейсы | 2d | 2002-04-15 A | 2002-04-16 A | 16 | 100% |  | 2002-04-15 | 2002-04-16 | 2d |  |  | start no earlier than 2002-04-15 | Брызгалов Виталий [50%] | 8h | 8h |
| 18 | 1.1.1.3.4 | Тестирование | 4d | 2002-04-12 A | 2002-04-18 A | 16, 17, 19 | 100% |  | 2002-04-17 | 2002-04-18 | 2d |  |  |  | Брызгалов Виталий [50%]; Ступник Константин | 28h | 28h |
| 19 | 1.1.1.4 | **Dummy SME** | 2d | 2002-04-04 A | 2002-04-05 A | 16 | 100% |  | 2002-04-09 | 2002-04-11 | 3d |  |  |  |  | 13h | 13h |
| 20 | 1.1.1.4.1 | Архитектура | 2d | 2002-04-04 A | 2002-04-05 A |  | 100% |  | 2002-04-09 | 2002-04-09 | 1d |  |  | start no earlier than 2002-04-05 | Ступник Константин [12.5%]; Рыжков Виктор [50%] | 5h | 5h |
| 21 | 1.1.1.4.2 | Разработка | 1d | 2002-04-05 A | 2002-04-05 A | 20 | 100% |  | 2002-04-10 | 2002-04-11 | 2d |  |  |  | Ступник Константин | 8h | 8h |
| 22 | 1.1.2 | **Router** | 23.12d | 2002-03-29 A | 2002-04-29 | 6 | 85% | 3.39d | 2002-03-28 | 2002-04-26 | 22d | 28d | 6d |  | Чен Алексей | 309h | 257.84h |
| 23 | 1.1.2.1 | Архитектура | 2d | 2002-03-29 A | 2002-03-31 A |  | 100% |  | 2002-03-28 | 2002-04-02 | 4d |  |  | finish no earlier than 2002-04-02 | Чен Алексей; Рыжков Виктор [50%] | 16h | 16h |
| 24 | 1.1.2.2 | Разработка | 7.5d | 2002-04-01 A | 2002-04-15 A | 23 | 100% |  | 2002-04-03 | 2002-04-09 | 5d |  |  |  | Чен Алексей [200%] | 57h | 57h |
| 25 | 1.1.2.3 | Тесткейсы | 2d | 2002-04-19 A | 2002-04-24 A | 23 | 100% |  | 2002-04-22 | 2002-04-23 | 2d |  |  | start no earlier than 2002-04-22 | Брызгалов Виталий [37.5%] | 3.5h | 3.5h |
| 26 | 1.1.2.4 | Тестирование | 8d | 2002-04-18 A | 2002-04-29 | 24, 25 | 64% | 2.86d | 2002-04-24 | 2002-04-26 | 3d | 5d |  |  | Брызгалов Виталий [112.5%]; Чен Алексей | 47.5h | 23.5h |

| ID | WBS | Task | Type | Duration | Start | Finish | Predecessors | Complete | Remaining | Baseline start | Baseline finish | Baseline duration | Total slack | Free slack | Constraint | Resources | Work | Actual work |
| --- | --- | --- | --- | --- | --- | --- | --- | --- | --- | --- | --- | --- | --- | --- | --- | --- | --- | --- |
| 27 | 1.1.3 | **Aliasing** |  | 11d | 2002-04-16 A | 2002-04-29 | 16, 6, 24 | 38% | 6.88d | 2002-04-12 | 2002-05-03 | 14d | 28.12d | 6.12d |  |  | 69h | 25h |
| 28 | 1.1.3.1 | Архитектура |  | 1d | 2002-04-16 A | 2002-04-16 A |  | 100% |  | 2002-04-12 | 2002-04-17 | 4d |  |  | finish no earlier than 2002-04-02 | Рыжков Виктор [25%]; Чен Алексей [112.5%] | 11h | 11h |
| 29 | 1.1.3.2 | Разработка |  | 2d | 2002-04-17 A | 2002-04-23 A | 28 | 100% |  | 2002-04-18 | 2002-04-24 | 5d |  |  |  | Чен Алексей | 14h | 14h |
| 30 | 1.1.3.3 | Тесткейсы |  | 2d | 2002-04-24 | 2002-04-25 | 28, 29 |  |  | 2002-04-25 | 2002-04-26 | 2d | 5.12d | 0d | start no earlier than 2002-04-08 | Брызгалов Виталий [50%] | 8h |  |
| 31 | 1.1.3.4 | Тестирование |  | 3d | 2002-04-26 | 2002-04-29 | 29, 30 |  |  | 2002-04-29 | 2002-05-03 | 3d | 5.12d |  |  | Брызгалов Виталий [50%]; Чен Алексей | 36h |  |
| 32 | 1.1.4 | **SMS workflow** |  | 18.12d | 2002-04-15 A | 2002-05-13 | 11, 16, 21 | 65% | 6.3d | 2002-04-15 | 2002-04-30 | 12d | 22d | 0d |  |  | 371h | 239.6h |
| 33 | 1.1.4.1 | Архитектура |  | 6d | 2002-04-15 A | 2002-04-22 A |  | 100% |  | 2002-04-11 | 2002-04-17 | 5d |  |  | start no earlier than 2002-04-11 | Рыжков Виктор; Ступник Константин; Чен Алексей | 72h | 72h |
| 34 | 1.1.4.2 | **Разработка** |  | 7.12d | 2002-04-24 A | 2002-05-06 | 33 | 90% | 0.71d | 2002-04-18 | 2002-04-23 | 4d | 22d | 0d |  | Ступник Константин; Чен Алексей | 187h | 167.6h |
| 35 | 1.1.4.2.1 | EventQueue |  | 5d | 2002-04-24 A | 2002-04-30 A |  | 100% |  | 2002-04-18 | 2002-04-23 | 4d |  |  |  | Чен Алексей | 32h | 32h |
| 36 | 1.1.4.2.2 | SMS StateMachine |  | 4d | 2002-04-26 A | 2002-04-30 A |  | 100% |  | 2002-04-18 | 2002-04-22 | 3d |  |  |  | Ступник Константин [114.3%] | 33h | 33h |
| 37 | 1.1.4.2.3 | Scheduler |  | 1d | 2002-05-06 | 2002-05-06 | 36 |  |  | 2002-04-23 | 2002-04-23 | 1d | 15d |  |  | Ступник Константин | 8h |  |
| 38 | 1.1.4.3 | Тесткейсы |  | 3d | 2002-04-23 | 2002-04-25 | 33 |  |  | 2002-04-22 | 2002-04-24 | 3d | 4.12d | 1d | start no earlier than 2002-04-22 | Брызгалов Виталий | 24h |  |
| 39 | 1.1.4.4 | Тестирование |  | 4d | 2002-05-07 | 2002-05-13 | 34, 38 |  |  | 2002-04-25 | 2002-04-30 | 4d | 15d |  |  | Брызгалов Виталий [75%]; Ступник Константин; Чен Алексей | 88h |  |
| 40 | 1.1.5 | Первый билд ядра | milestone | 0d | 2002-05-13 | 2002-05-13 | 27, 32, 22, 3 |  |  | 2002-05-06 | 2002-05-06 | 0d | 15d | 0d | start no earlier than 2002-05-06 |  |  |  |
| 41 | 1.1.6 | MAP support (research) |  | 10d | 2002-05-14 | 2002-05-27 | 40 |  |  | 2002-05-07 | 2002-05-21 | 10d | 15d |  | start no earlier than 2002-05-07 | Ступник Константин [50%]; Чен Алексей [50%]; Рыжков Виктор [50%] | 120h |  |
| 42 | 1.1.7 | **SMPP API** |  | 7d | 2002-04-29 A | 2002-05-13 |  | 13% | 6.12d |  |  |  | 32d |  |  |  | 80h | 12h |
| 43 | 1.1.7.1 | Архитектура |  | 3d | 2002-04-29 A | 2002-05-06 |  | 33% | 2d |  |  |  | 32d | 0d | start no earlier than 2002-04-29 | Рыжков Виктор; Брызгалов Виталий [50%]; Ступник Константин [50%] | 36h | 12h |
| 44 | 1.1.7.2 | Разработка |  | 3d | 2002-05-07 | 2002-05-12 | 43 |  |  |  |  |  | 32d | 0d |  | Ступник Константин | 24h |  |
| 45 | 1.1.7.3 | Тесткейсы |  | 1d | 2002-05-12 | 2002-05-12 | 43 |  |  |  |  |  | 32d | 0d | start no earlier than 2002-05-12 | Брызгалов Виталий | 8h |  |
| 46 | 1.1.7.4 | Тестирование |  | 1d | 2002-05-13 | 2002-05-13 | 44, 45 |  |  |  |  |  | 32d |  |  | Брызгалов Виталий; Ступник Константин [50%] | 12h |  |
| 47 | 1.1.8 | **Поддержка сложных маршрутов** |  | 3d | 2002-05-06 | 2002-05-08 | 29 |  |  | 2002-04-24 | 2002-04-29 | 3d | 34d |  |  |  | 48h |  |
| 48 | 1.1.8.1 | Архитектура и планирование |  | 3d | 2002-05-06 | 2002-05-08 |  |  |  | 2002-05-06 | 2002-05-08 | 3d | 11d |  | start no earlier than 2002-05-06 | Рыжков Виктор; Чен Алексей | 48h |  |
| 49 | 1.1.9 | Тесткейсы |  | 4d | 2002-05-07 | 2002-05-13 | 28, 23 |  |  | 2002-05-07 | 2002-05-13 | 4d | 3d | 0d | start no earlier than 2002-05-07 | Брызгалов Виталий [50%] | 16h |  |
| 50 | 1.1.10 | Тестирование |  | 6d | 2002-05-14 | 2002-05-21 | 40, 49 |  |  | 2002-05-14 | 2002-05-21 | 6d | 3d | 2d | start no earlier than 2002-05-06 | Брызгалов Виталий [50%]; Чен Алексей [50%]; Ступник Константин [50%] | 72h |  |
| 51 | 1.1.11 | Альфа версия ядра | milestone | 0d | 2002-05-24 | 2002-05-24 | 50 |  |  | 2002-05-24 | 2002-05-24 | 0d | 1d |  | start no earlier than 2002-05-24 |  |  |  |

| ID | WBS | Task | Duration | Start | Finish | Predecessors | Complete | Remaining | Baseline start | Baseline finish | Baseline duration | Total slack | Free slack | Constraint | Resources | Work | Actual work |
| --- | --- | --- | --- | --- | --- | --- | --- | --- | --- | --- | --- | --- | --- | --- | --- | --- | --- |
| 52 | 1.2 | **Система хранения сообщений** | 43.25d | 2002-03-18 A | 2002-05-21 |  | 75% | 10.86d | 2002-03-18 | 2002-05-08 | 36d | 26.88d |  |  |  | 427.5h | 266.5h |
| 53 | 1.2.1 | **Status update** | 4d | 2002-03-18 A | 2002-03-21 A |  | 100% |  | 2002-03-18 | 2002-03-20 | 3d |  |  |  |  | 36h | 36h |
| 54 | 1.2.1.1 | Архитектура | 1.12d | 2002-03-18 A | 2002-03-19 A |  | 100% |  | 2002-03-18 | 2002-03-18 | 1d |  |  |  | Макаров Виктор [300%] | 10h | 10h |
| 55 | 1.2.1.2 | Разработка | 2d | 2002-03-19 A | 2002-03-21 A | 54 | 100% |  | 2002-03-19 | 2002-03-19 | 1d |  |  |  | Макаров Виктор [75%] | 12h | 12h |
| 56 | 1.2.1.3 | Тесткейсы | 0.88d | 2002-03-19 A | 2002-03-19 A | 54 | 100% |  | 2002-03-19 | 2002-03-19 | 0.5d |  |  |  | Брызгалов Виталий | 7h | 7h |
| 57 | 1.2.1.4 | Тестирование | 1d | 2002-03-20 A | 2002-03-20 A | 56, 55 | 100% |  | 2002-03-20 | 2002-03-20 | 1d |  |  |  | Брызгалов Виталий [87.5%]; Макаров Виктор | 7h | 7h |
| 58 | 1.2.2 | **Архиватор** | 12d | 2002-03-19 A | 2002-04-03 A | 53 | 100% |  | 2002-03-21 | 2002-04-02 | 9d |  |  |  |  | 78.5h | 78.5h |
| 59 | 1.2.2.1 | Архитектура | 3d | 2002-03-19 A | 2002-03-25 A |  | 100% |  | 2002-03-21 | 2002-03-25 | 3d |  |  |  | Макаров Виктор; Рыжков Виктор [50%]; Брызгалов Виталий [50%] | 23.5h | 23.5h |
| 60 | 1.2.2.2 | Разработка | 2d | 2002-03-28 A | 2002-03-29 A | 59 | 100% |  | 2002-03-26 | 2002-03-28 | 3d |  |  |  | Макаров Виктор | 16h | 16h |
| 61 | 1.2.2.3 | Тесткейсы | 1d | 2002-03-29 A | 2002-03-29 A | 59 | 100% |  | 2002-03-27 | 2002-03-27 | 1d |  |  | start no earlier than 2002-03-27 | Брызгалов Виталий [50%] | 4h | 4h |
| 62 | 1.2.2.4 | Тестирование | 5d | 2002-03-29 A | 2002-04-03 A | 61, 60 | 100% |  | 2002-03-29 | 2002-04-02 | 3d |  |  |  | Макаров Виктор; Брызгалов Виталий [50%] | 35h | 35h |
| 63 | 1.2.3 | **Доработка системы хранения** | 10d | 2002-04-03 A | 2002-04-16 A | 58 | 100% |  | 2002-04-04 | 2002-04-18 | 11d |  |  |  |  | 111h | 111h |
| 64 | 1.2.3.1 | Архитектура | 3d | 2002-04-03 A | 2002-04-05 A |  | 100% |  | 2002-04-04 | 2002-04-09 | 4d |  |  | start no earlier than 2002-04-04 | Рыжков Виктор [62.5%]; Брызгалов Виталий [62.5%]; Макаров Виктор [56.2%] | 25.5h | 25.5h |
| 65 | 1.2.3.2 | Разработка | 3d | 2002-04-05 A | 2002-04-09 A | 64 | 100% |  | 2002-04-10 | 2002-04-15 | 4d |  |  |  | Макаров Виктор [112.5%] | 20h | 20h |
| 66 | 1.2.3.3 | Тесткейсы | 2d | 2002-04-09 A | 2002-04-10 A | 64 | 100% |  | 2002-04-10 | 2002-04-11 | 2d |  |  |  | Брызгалов Виталий | 16h | 16h |
| 67 | 1.2.3.4 | Тестирование | 5d | 2002-04-10 A | 2002-04-16 A | 65, 66 | 100% |  | 2002-04-16 | 2002-04-18 | 3d |  |  |  | Брызгалов Виталий; Макаров Виктор | 49.5h | 49.5h |
| 68 | 1.2.4 | **Запросы для шедулера** | 14.25d | 2002-04-16 A | 2002-05-08 | 63, 33 | 45% | 7.9d | 2002-04-22 | 2002-04-30 | 7d | 26.88d | 0d |  |  | 67h | 14h |
| 69 | 1.2.4.1 | Архитектура | 3d | 2002-04-16 A | 2002-04-18 A |  | 100% |  | 2002-04-22 | 2002-04-23 | 2d |  |  | start no earlier than 2002-04-22 | Брызгалов Виталий [11.5%]; Рыжков Виктор [5.8%]; Макаров Виктор [25%] | 7h | 7h |
| 70 | 1.2.4.2 | Разработка | 2.25d | 2002-04-27 A | 2002-04-30 | 69 | 50% | 1.12d | 2002-04-24 | 2002-04-25 | 2d | 4.88d | 0d |  | Макаров Виктор | 16h | 7h |
| 71 | 1.2.4.3 | Тесткейсы | 1d | 2002-04-23 | 2002-04-23 | 69 |  |  | 2002-04-24 | 2002-04-24 | 1d | 9.12d | 1d |  | Брызгалов Виталий | 8h |  |
| 72 | 1.2.4.4 | Тестирование | 3d | 2002-04-30 | 2002-05-08 | 70, 71 |  |  | 2002-04-26 | 2002-04-30 | 3d | 4.88d |  |  | Макаров Виктор; Брызгалов Виталий [50%] | 36h |  |
| 73 | 1.2.5 | Анализ dbSME от SoftPro | 6d | 2002-04-18 A | 2002-04-25 A |  | 100% |  | 2002-04-17 | 2002-04-22 | 4d |  |  | finish no earlier than 2002-04-22 | Макаров Виктор [75%]; Рыжков Виктор [50%] | 27h | 27h |
| 74 | 1.2.6 | Оптимизация индексов таблиц | 3d | 2002-05-08 | 2002-05-14 | 68 |  |  | 2002-05-06 | 2002-05-08 | 3d | 4.88d | 0d | start no earlier than 2002-05-06 | Макаров Виктор; Брызгалов Виталий | 48h |  |
| 75 | 1.2.7 | Performance and stress testing | 5d | 2002-05-14 | 2002-05-21 | 74 |  |  | 2002-05-10 | 2002-05-16 | 5d | 4.88d |  | start no earlier than 2002-05-10 | Брызгалов Виталий [50%]; Макаров Виктор | 60h |  |

| ID | WBS | Task | Duration | Start | Finish | Predecessors | Complete | Remaining | Baseline start | Baseline finish | Baseline duration | Total slack | Free slack | Constraint | Resources | Work | Actual work |
| --- | --- | --- | --- | --- | --- | --- | --- | --- | --- | --- | --- | --- | --- | --- | --- | --- | --- |
| 76 | 1.3 | **Интерфейс администратора** | 46.12d | 2002-03-15 A | 2002-05-22 |  | 61% | 18.13d |  |  |  | 2d |  |  |  | 455h | 239h |
| 77 | 1.3.1 | Разработка прототипа веб приложения | 10d | 2002-03-21 A | 2002-04-11 A |  | 100% |  | 2002-03-18 | 2002-03-29 | 10d |  |  | start no earlier than 2002-03-18 | Каляткин Игорь | 50h | 50h |
| 78 | 1.3.2 | Daemon management | 17d | 2002-03-15 A | 2002-04-15 A |  | 100% |  | 2002-03-18 | 2002-03-29 | 10d |  |  | start no earlier than 2002-03-18 | Каляткин Игорь [150%] | 110h | 110h |
| 79 | 1.3.3 | Доработка архитектура системы администрирования | 6d | 2002-04-15 A | 2002-04-22 A | 78, 77 | 100% |  | 2002-04-15 | 2002-04-19 | 5d |  |  | finish no earlier than 2002-04-19 | Каляткин Игорь [112.5%]; Рыжков Виктор [50%]; Чен Алексей [20%]; Ступник Константин [20%] | 60h | 60h |
| 80 | 1.3.4 | **Service Registration Wizard** | 16.12d | 2002-04-22 A | 2002-05-16 |  | 22% | 12.62d | 2002-04-18 | 2002-05-16 | 18.12d | 29d |  |  |  | 99h | 19h |
| 81 | 1.3.4.1 | Архитектура | 2.5d | 2002-04-22 A | 2002-04-24 A |  | 100% |  | 2002-04-18 | 2002-04-19 | 2d |  |  | start no earlier than 2002-04-18 | Каляткин Игорь; Рыжков Виктор [18.8%] | 19h | 19h |
| 82 | 1.3.4.2 | Разработка | 5d | 2002-04-24 | 2002-04-30 | 81 |  |  | 2002-04-22 | 2002-04-26 | 5d | 4.62d | 0d |  | Каляткин Игорь | 40h |  |
| 83 | 1.3.4.3 | Тесткейсы | 2d | 2002-05-13 | 2002-05-14 | 81 |  |  | 2002-05-13 | 2002-05-14 | 2d | 6d | 0d | start no earlier than 2002-05-13 | Брызгалов Виталий | 16h |  |
| 84 | 1.3.4.4 | Тестирование | 2d | 2002-05-15 | 2002-05-16 | 82, 83 |  |  | 2002-05-15 | 2002-05-16 | 2d | 6d |  |  | Брызгалов Виталий [50%]; Каляткин Игорь | 24h |  |
| 85 | 1.3.5 | **Route editor** | 12.62d | 2002-04-30 | 2002-05-22 | 82 |  |  | 2002-04-27 | 2002-05-22 | 15.12d | 2d |  |  |  | 136h |  |
| 86 | 1.3.5.1 | Архитектура | 3d | 2002-04-30 | 2002-05-08 |  |  |  | 2002-04-27 | 2002-04-30 | 3d | 4.62d | 0d |  | Каляткин Игорь; Рыжков Виктор [50%] | 36h |  |
| 87 | 1.3.5.2 | Разработка | 6d | 2002-05-12 | 2002-05-17 | 86 |  |  | 2002-05-06 | 2002-05-12 | 4d | 2d | 0d | start no earlier than 2002-05-12 | Каляткин Игорь | 48h |  |
| 88 | 1.3.5.3 | Тесткейсы | 2d | 2002-05-16 | 2002-05-17 | 86 |  |  | 2002-05-16 | 2002-05-17 | 2d | 2d | 0d | start no earlier than 2002-05-16 | Брызгалов Виталий | 16h |  |
| 89 | 1.3.5.4 | Тестирование | 3d | 2002-05-20 | 2002-05-22 | 87, 88 |  |  | 2002-05-20 | 2002-05-22 | 3d | 2d |  |  | Каляткин Игорь; Брызгалов Виталий [50%] | 36h |  |
| 90 | 1.4 | **DB SME** | 36d | 2002-05-07 | 2002-06-26 |  |  |  |  |  |  | 0d |  |  |  | 52h |  |
| 91 | 1.4.1 | **DB Driver** | 17d | 2002-05-07 | 2002-05-30 |  |  |  |  |  |  | 0d |  |  |  | 52h |  |
| 92 | 1.4.1.1 | Архитектура | 1d | 2002-05-07 | 2002-05-07 |  |  |  |  |  |  | 4d | 0d | start no earlier than 2002-05-07 | Рыжков Виктор [50%]; Макаров Виктор | 12h |  |
| 93 | 1.4.1.2 | Реализация | 5d | 2002-05-08 | 2002-05-15 | 92 |  |  |  |  |  | 4d | 0d |  | Макаров Виктор | 40h |  |
| 94 | 1.4.1.3 | Тесткейсы | 1d | 2002-05-27 | 2002-05-27 | 92 |  |  |  |  |  | 0d |  | start no earlier than 2002-05-27 |  |  |  |
| 95 | 1.4.1.4 | Тестирование | 3d | 2002-05-28 | 2002-05-30 | 93, 94 |  |  |  |  |  | 0d |  |  |  |  |  |
| 96 | 1.4.2 | **Command processing** | 14d | 2002-05-16 | 2002-06-04 | 93 |  |  |  |  |  | 0d |  |  |  |  |  |
| 97 | 1.4.2.1 | Архитектура | 3d | 2002-05-16 | 2002-05-20 |  |  |  |  |  |  | 4d | 0d |  |  |  |  |
| 98 | 1.4.2.2 | Реализация | 2d | 2002-05-21 | 2002-05-22 | 97 |  |  |  |  |  | 4d | 0d |  |  |  |  |
| 99 | 1.4.2.3 | Тесткейсы | 1d | 2002-05-31 | 2002-05-31 | 97, 95 |  |  |  |  |  | 0d |  | start no earlier than 2002-05-27 |  |  |  |
| 100 | 1.4.2.4 | Тестирование | 2d | 2002-06-03 | 2002-06-04 | 99, 98 |  |  |  |  |  | 0d |  |  |  |  |  |

| ID | WBS | Task | Duration | Start | Finish | Predecessors | Baseline start | Baseline finish | Baseline duration | Total slack | Free slack | Constraint | Resources | Work |
| --- | --- | --- | --- | --- | --- | --- | --- | --- | --- | --- | --- | --- | --- | --- |
| 101 | 1.4.3 | **SQL Job** | 12d | 2002-05-23 | 2002-06-07 | 98 |  |  |  | 0d |  |  |  |  |
| 102 | 1.4.3.1 | Архитектура | 1d | 2002-05-23 | 2002-05-23 |  |  |  |  | 4d | 0d |  |  |  |
| 103 | 1.4.3.2 | Реализация | 2d | 2002-05-24 | 2002-05-27 | 102 |  |  |  | 4d | 0d |  |  |  |
| 104 | 1.4.3.3 | Тесткейсы | 1d | 2002-06-05 | 2002-06-05 | 102, 100 |  |  |  | 0d |  | start no earlier than 2002-05-27 |  |  |
| 105 | 1.4.3.4 | Тестирование | 2d | 2002-06-06 | 2002-06-07 | 103, 104 |  |  |  | 0d |  |  |  |  |
| 106 | 1.4.4 | **SME App** | 15d | 2002-05-28 | 2002-06-17 | 103 |  |  |  | 0d |  |  |  |  |
| 107 | 1.4.4.1 | Архитектура | 2d | 2002-05-28 | 2002-05-29 |  |  |  |  | 4d | 0d |  |  |  |
| 108 | 1.4.4.2 | Реализация | 4d | 2002-05-30 | 2002-06-04 | 107 |  |  |  | 4d | 0d |  |  |  |
| 109 | 1.4.4.3 | Тесткейсы | 2d | 2002-06-10 | 2002-06-11 | 107, 105 |  |  |  | 0d |  | start no earlier than 2002-05-27 |  |  |
| 110 | 1.4.4.4 | Тестирование | 4d | 2002-06-12 | 2002-06-17 | 108, 109 |  |  |  | 0d |  |  |  |  |
| 111 | 1.4.5 | **IO Formats** | 16d | 2002-06-05 | 2002-06-26 | 108 |  |  |  | 0d |  |  |  |  |
| 112 | 1.4.5.1 | Архитектура | 3d | 2002-06-05 | 2002-06-07 |  |  |  |  | 4d | 0d |  |  |  |
| 113 | 1.4.5.2 | Реализация | 5d | 2002-06-10 | 2002-06-14 | 112 |  |  |  | 4d |  |  |  |  |
| 114 | 1.4.5.3 | Тесткейсы | 3d | 2002-06-18 | 2002-06-20 | 112, 110 |  |  |  | 0d |  | start no earlier than 2002-05-27 |  |  |
| 115 | 1.4.5.4 | Тестирование | 4d | 2002-06-21 | 2002-06-26 | 113, 114 |  |  |  | 0d |  |  |  |  |
| 116 | 1.5 | **Разное** | 47.12d | 2002-03-18 | 2002-05-24 |  |  |  |  | 23d |  |  |  | 36h |
| 117 | 1.5.1 | Поддержка среды разработки | 45d | 2002-03-18 | 2002-05-22 |  | 2002-03-18 | 2002-05-22 | 45d | 25.12d |  | start no earlier than 2002-03-18 | Ступник Константин [5%]; Чен Алексей [5%] | 36h |
| 118 | 1.5.2 | Собрания | 47d | 2002-03-18 | 2002-05-24 |  | 2002-03-18 | 2002-05-24 | 47d | 23d |  | finish no earlier than 2002-05-24 |  |  |
| 119 | 1.5.3 | Консультации | 47d | 2002-03-18 | 2002-05-24 |  | 2002-03-18 | 2002-05-24 | 47d | 23.12d |  | start no earlier than 2002-03-18 |  |  |
